# Ke Hoach SRS (2016)

Schedule from MS Project, 2019-11-15 to 2020-03-10, A marks actual dates.

## Calendars

- Standard: Mon-Fri 08:00-12:00, 13:00-17:00; Sat-Sun off. Exceptions (off unless hours are given): 2020-01-11 08:00-12:00, 13:00-17:00.

## Resources

| Resource |
| --- |
| Mạnh ND |
| Hiếu NM |
| Thành LD |
| Huấn |
| Đức PT |
| Huấn NT |

## Schedule

| ID | WBS | Task | Duration | Start | Finish | Complete | Remaining | Actual start | Total slack | Constraint | Resources | Work | Actual work |
| --- | --- | --- | --- | --- | --- | --- | --- | --- | --- | --- | --- | --- | --- |
| 1 | 1 | **Dự án đánh giá chất lượng dịch vụ** | 84d? | 2019-11-15 A | 2020-03-10 | 68% | 27.1d? |  |  |  |  | 4416h | 512h |
| 2 | 1.1 | **Website quản trị** | 73d? | 2019-11-15 A | 2020-02-22 | 74% | 19.21d? |  |  |  |  | 4416h | 512h |
| 3 | 1.1.1 | **Phân tích thiết kế** | 42d? | 2019-11-15 A | 2020-01-11 | 82% | 7.54d? |  | 42d |  |  | 1184h | 152h |
| 4 | 1.1.1.1 | Yêu cầu bài toán | 1d | 2019-11-15 A | 2019-11-15 A | 100% |  |  |  | start no earlier than 2019-11-15 | Mạnh ND | 8h | 8h |
| 5 | 1.1.1.2 | Xây dựng Database | 3d | 2019-11-27 A | 2019-11-29 A | 100% |  |  |  | start no earlier than 2019-11-27 | Hiếu NM; Thành LD | 48h | 48h |
| 6 | 1.1.1.3 | Viết tài liệu mô tả Database | 2d | 2020-01-07 A | 2020-01-08 A | 100% |  |  |  | start no earlier than 2020-01-07 | Huấn NT | 16h | 16h |
| 7 | 1.1.1.4 | **Viết tài liệu mô tả chức năng** | 42d? | 2019-11-15 | 2020-01-11 | 79% | 8.91d? | 2020-01-08 |  |  | Hiếu NM; Huấn NT; Thành LD | 1112h | 80h |
| 8 | 1.1.1.4.1 | **Chức năng quản lý đối tượng phản hồi** | 1d | 2020-01-09 A | 2020-01-09 A | 100% |  |  |  |  | Huấn NT | 8h | 8h |
| 9 | 1.1.1.4.1.1 | Danh sách đối tượng | 1d | 2020-01-09 A | 2020-01-09 A | 100% |  |  |  | start no earlier than 2020-01-09 |  |  |  |
| 10 | 1.1.1.4.1.2 | Thêm mới đối tượng | 1d | 2020-01-09 A | 2020-01-09 A | 100% |  |  |  | start no earlier than 2020-01-09 |  |  |  |
| 11 | 1.1.1.4.2 | **Chức năng quản lý khảo sát** | 1d | 2020-01-08 A | 2020-01-08 A | 100% |  |  |  |  | Thành LD | 8h | 8h |
| 12 | 1.1.1.4.2.1 | Danh sách khảo sát | 1d | 2020-01-08 A | 2020-01-08 A | 100% |  |  |  | start no earlier than 2020-01-08 |  |  |  |
| 13 | 1.1.1.4.2.2 | Thêm mới khảo sát | 1d | 2020-01-08 A | 2020-01-08 A | 100% |  |  |  | start no earlier than 2020-01-08 |  |  |  |
| 14 | 1.1.1.4.2.3 | Thêm khảo sát thành phần | 1d | 2020-01-08 A | 2020-01-08 A | 100% |  |  |  | start no earlier than 2020-01-08 |  |  |  |
| 15 | 1.1.1.4.3 | **Quản lý phản hồi** | 1d | 2020-01-10 A | 2020-01-10 A | 100% |  |  |  |  | Thành LD | 8h | 8h |
| 16 | 1.1.1.4.3.1 | Danh sách phản hồi | 1d | 2020-01-10 A | 2020-01-10 A | 100% |  |  |  | start no earlier than 2020-01-10 |  |  |  |
| 17 | 1.1.1.4.3.2 | Xuất dữ liệu ra file (excel, csv) | 1d | 2020-01-10 A | 2020-01-10 A | 100% |  |  |  | start no earlier than 2020-01-10 |  |  |  |
| 18 | 1.1.1.4.4 | **Thống kê khảo sát** | 1d? | 2020-01-11 | 2020-01-11 |  |  |  |  |  | Thành LD | 8h |  |
| 19 | 1.1.1.4.4.1 | Vẽ biểu đồ theo khảo sát | 1d? | 2020-01-11 | 2020-01-11 |  |  |  | 42d |  |  |  |  |
| 20 | 1.1.1.4.4.2 | Thống kê khảo sát thành phần | 1d? | 2020-01-11 | 2020-01-11 |  |  |  | 42d |  |  |  |  |
| 21 | 1.1.1.4.5 | **Quản lý nhóm thiết bị** | 1d | 2020-01-09 A | 2020-01-09 A | 100% |  |  |  |  | Hiếu NM | 8h | 8h |
| 22 | 1.1.1.4.5.1 | Danh sách | 1d | 2020-01-09 A | 2020-01-09 A | 100% |  |  |  | start no earlier than 2020-01-09 |  |  |  |
| 23 | 1.1.1.4.5.2 | Thêm mới | 1d | 2020-01-09 A | 2020-01-09 A | 100% |  |  |  | start no earlier than 2020-01-09 |  |  |  |
| 24 | 1.1.1.4.6 | **Quản lý thiết bị** | 1d | 2020-01-09 A | 2020-01-09 A | 100% |  |  |  |  | Hiếu NM | 8h | 8h |
| 25 | 1.1.1.4.6.1 | Danh sách thiết bị | 1d | 2020-01-09 A | 2020-01-09 A | 100% |  |  |  | start no earlier than 2020-01-09 |  |  |  |

| ID | WBS | Task | Duration | Start | Finish | Complete | Constraint | Resources | Work | Actual work |
| --- | --- | --- | --- | --- | --- | --- | --- | --- | --- | --- |
| 26 | 1.1.1.4.6.2 | **Thêm mới thiết bị** | 1d | 2020-01-09 A | 2020-01-09 A | 100% |  |  |  |  |
| 27 | 1.1.1.4.6.2.1 | **Web, email** | 1d | 2020-01-09 A | 2020-01-09 A | 100% |  |  |  |  |
| 28 | 1.1.1.4.6.2.1.1 | Tạo địa chỉ cho trang khảo sát | 1d | 2020-01-09 A | 2020-01-09 A | 100% | start no earlier than 2020-01-09 |  |  |  |
| 29 | 1.1.1.4.6.2.2 | **Kiosk** | 1d | 2020-01-09 A | 2020-01-09 A | 100% |  |  |  |  |
| 30 | 1.1.1.4.6.2.2.1 | Tạo mã QR cho thiết bị | 1d | 2020-01-09 A | 2020-01-09 A | 100% | start no earlier than 2020-01-09 |  |  |  |
| 31 | 1.1.1.4.7 | **Quản lý khách hàng** | 1d | 2020-01-09 A | 2020-01-09 A | 100% |  | Hiếu NM | 8h | 8h |
| 32 | 1.1.1.4.7.1 | Danh sách | 1d | 2020-01-09 A | 2020-01-09 A | 100% | start no earlier than 2020-01-09 |  |  |  |
| 33 | 1.1.1.4.7.2 | Thêm mới | 1d | 2020-01-09 A | 2020-01-09 A | 100% | start no earlier than 2020-01-09 |  |  |  |
| 34 | 1.1.1.4.7.3 | Nhập dữ liệu từ file | 1d | 2020-01-09 A | 2020-01-09 A | 100% | start no earlier than 2020-01-09 |  |  |  |
| 35 | 1.1.1.4.7.4 | Mời khách hàng khảo sát | 1d | 2020-01-09 A | 2020-01-09 A | 100% | start no earlier than 2020-01-09 |  |  |  |
| 36 | 1.1.1.4.7.5 | Danh sách mời khảo sát | 1d | 2020-01-09 A | 2020-01-09 A | 100% | start no earlier than 2020-01-09 |  |  |  |
| 37 | 1.1.1.4.8 | **Chương trình khuyến mãi** | 1d | 2020-01-10 A | 2020-01-10 A | 100% |  | Huấn NT | 8h | 8h |
| 38 | 1.1.1.4.8.1 | Danh sách chương trình | 1d | 2020-01-10 A | 2020-01-10 A | 100% | start no earlier than 2020-01-10 |  |  |  |
| 39 | 1.1.1.4.8.2 | Thêm mới chương trình | 1d | 2020-01-10 A | 2020-01-10 A | 100% | start no earlier than 2020-01-10 |  |  |  |
| 40 | 1.1.1.4.8.3 | Danh sách mã thưởng | 1d | 2020-01-10 A | 2020-01-10 A | 100% | start no earlier than 2020-01-10 |  |  |  |
| 41 | 1.1.1.4.8.4 | Kiểm tra mã | 1d | 2020-01-10 A | 2020-01-10 A | 100% | start no earlier than 2020-01-10 |  |  |  |
| 42 | 1.1.1.4.9 | **Quản lý bộ sưu tập** | 1d | 2020-01-10 A | 2020-01-10 A | 100% |  | Hiếu NM | 8h | 8h |
| 43 | 1.1.1.4.9.1 | Tải lên ảnh | 1d | 2020-01-10 A | 2020-01-10 A | 100% | start no earlier than 2020-01-10 |  |  |  |
| 44 | 1.1.1.4.10 | **Quản lý theme** | 1d | 2020-01-10 A | 2020-01-10 A | 100% |  | Hiếu NM | 8h | 8h |
| 45 | 1.1.1.4.10.1 | Danh sách | 1d | 2020-01-10 A | 2020-01-10 A | 100% | start no earlier than 2020-01-10 |  |  |  |
| 46 | 1.1.1.4.10.2 | Thêm mới | 1d | 2020-01-10 A | 2020-01-10 A | 100% | start no earlier than 2020-01-10 |  |  |  |
| 47 | 1.1.1.4.11 | **Quản lý lời cảm ơn** | 1d | 2020-01-11 A | 2020-01-11 A | 100% |  | Huấn NT | 8h | 8h |
| 48 | 1.1.1.4.11.1 | Danh sách | 1d | 2020-01-11 A | 2020-01-11 A | 100% | start no earlier than 2020-01-11 |  |  |  |
| 49 | 1.1.1.4.11.2 | Thêm mới | 1d | 2020-01-11 A | 2020-01-11 A | 100% | start no earlier than 2020-01-11 |  |  |  |

| ID | WBS | Task | Duration | Start | Finish | Complete | Remaining | Actual start | Total slack | Constraint | Resources | Work | Actual work |
| --- | --- | --- | --- | --- | --- | --- | --- | --- | --- | --- | --- | --- | --- |
| 50 | 1.1.1.4.12 | **Cấu hình** | 1d? | 2020-01-11 | 2020-01-11 |  |  |  |  |  | Thành LD | 8h |  |
| 51 | 1.1.1.4.12.1 | Ngôn ngữ | 1d? | 2020-01-11 | 2020-01-11 |  |  |  | 42d |  |  |  |  |
| 52 | 1.1.1.4.12.2 | Cấu hình chung | 1d? | 2020-01-11 | 2020-01-11 |  |  |  | 42d |  |  |  |  |
| 53 | 1.1.1.4.13 | **Trang cộng đồng** | 1d? | 2020-01-11 | 2020-01-11 |  |  |  |  |  | Hiếu NM | 8h |  |
| 54 | 1.1.1.4.13.1 | Cấu hình thông tin | 1d? | 2020-01-11 | 2020-01-11 |  |  |  | 42d |  |  |  |  |
| 55 | 1.1.1.4.13.2 | Danh sách bảng tin | 1d? | 2020-01-11 | 2020-01-11 |  |  |  | 42d |  |  |  |  |
| 56 | 1.1.1.4.13.3 | Thêm mới bảng tin | 1d? | 2020-01-11 | 2020-01-11 |  |  |  | 42d |  |  |  |  |
| 57 | 1.1.2 | **Lập trình** | 72d | 2019-11-15 | 2020-02-21 | 72% | 19.94d | 2019-12-10 |  |  | Đức PT; Hiếu NM; Huấn NT; Thành LD | 3232h | 360h |
| 58 | 1.1.2.1 | Khởi tạo môi trường | 1d | 2019-12-10 A | 2019-12-10 A | 100% |  |  |  | start no earlier than 2019-12-10 | Hiếu NM | 8h | 8h |
| 59 | 1.1.2.2 | **Viết tầng entities** | 3d | 2019-12-10 A | 2019-12-12 A | 100% |  |  |  |  | Hiếu NM; Thành LD | 96h | 96h |
| 60 | 1.1.2.2.1 | **Khảo sát(Survey)** | 1d | 2019-12-10 A | 2019-12-10 A | 100% |  |  |  |  | Thành LD | 8h | 8h |
| 61 | 1.1.2.2.1.1 | SurveyTotal (Khảo sát tổng) | 1d | 2019-12-10 A | 2019-12-10 A | 100% |  |  |  | start no earlier than 2019-12-10 |  |  |  |
| 62 | 1.1.2.2.1.2 | Survey (Khảo sát) | 1d | 2019-12-10 A | 2019-12-10 A | 100% |  |  |  | start no earlier than 2019-12-10 |  |  |  |
| 63 | 1.1.2.2.1.3 | Element Survey (Khảo sát thành phần) | 1d | 2019-12-10 A | 2019-12-10 A | 100% |  |  |  | start no earlier than 2019-12-10 |  |  |  |
| 64 | 1.1.2.2.1.4 | ContactField (Trường khảo sát) | 1d | 2019-12-10 A | 2019-12-10 A | 100% |  |  |  | start no earlier than 2019-12-10 |  |  |  |
| 65 | 1.1.2.2.2 | **Phản hồi(Answer)** | 1d | 2019-12-11 A | 2019-12-11 A | 100% |  |  |  |  | Thành LD | 8h | 8h |
| 66 | 1.1.2.2.2.1 | AnswerContact | 1d | 2019-12-11 A | 2019-12-11 A | 100% |  |  |  | start no earlier than 2019-12-11 |  |  |  |
| 67 | 1.1.2.2.2.2 | AnswerGroupLevel | 1d | 2019-12-11 A | 2019-12-11 A | 100% |  |  |  | start no earlier than 2019-12-11 |  |  |  |
| 68 | 1.1.2.2.2.3 | AnswerMultiChoice | 1d | 2019-12-11 A | 2019-12-11 A | 100% |  |  |  | start no earlier than 2019-12-11 |  |  |  |
| 69 | 1.1.2.2.2.4 | AnswerOpen | 1d | 2019-12-11 A | 2019-12-11 A | 100% |  |  |  | start no earlier than 2019-12-11 |  |  |  |
| 70 | 1.1.2.2.2.5 | AnswerSingleChoice | 1d | 2019-12-11 A | 2019-12-11 A | 100% |  |  |  | start no earlier than 2019-12-11 |  |  |  |
| 71 | 1.1.2.2.2.6 | AnswerTotal | 1d | 2019-12-11 A | 2019-12-11 A | 100% |  |  |  | start no earlier than 2019-12-11 |  |  |  |
| 72 | 1.1.2.2.3 | **Phản hồi thành phần(ElementAnswer)** | 1d | 2019-12-12 A | 2019-12-12 A | 100% |  |  |  |  | Thành LD | 8h | 8h |
| 73 | 1.1.2.2.3.1 | ElementAnswerLevel | 1d | 2019-12-12 A | 2019-12-12 A | 100% |  |  |  | start no earlier than 2019-12-12 |  |  |  |
| 74 | 1.1.2.2.3.2 | ElementAnswerMultiChoice | 1d | 2019-12-12 A | 2019-12-12 A | 100% |  |  |  | start no earlier than 2019-12-12 |  |  |  |
| 75 | 1.1.2.2.3.3 | ElementAnswerOpen | 1d | 2019-12-12 A | 2019-12-12 A | 100% |  |  |  | start no earlier than 2019-12-12 |  |  |  |
| 76 | 1.1.2.2.3.4 | ElementAnswerSingleChoice | 1d | 2019-12-12 A | 2019-12-12 A | 100% |  |  |  | start no earlier than 2019-12-12 |  |  |  |

| ID | WBS | Task | Duration | Start | Finish | Complete | Constraint | Resources | Work | Actual work |
| --- | --- | --- | --- | --- | --- | --- | --- | --- | --- | --- |
| 77 | 1.1.2.2.4 | **Tổ chức (Company)** | 1d | 2019-12-10 A | 2019-12-10 A | 100% |  | Hiếu NM | 8h | 8h |
| 78 | 1.1.2.2.4.1 | Company | 1d | 2019-12-10 A | 2019-12-10 A | 100% | start no earlier than 2019-12-10 |  |  |  |
| 79 | 1.1.2.2.4.2 | ObjectSurvey | 1d | 2019-12-10 A | 2019-12-10 A | 100% | start no earlier than 2019-12-10 |  |  |  |
| 80 | 1.1.2.2.4.3 | PublicNews | 1d | 2019-12-10 A | 2019-12-10 A | 100% | start no earlier than 2019-12-10 |  |  |  |
| 81 | 1.1.2.2.4.4 | User | 1d | 2019-12-10 A | 2019-12-10 A | 100% | start no earlier than 2019-12-10 |  |  |  |
| 82 | 1.1.2.2.5 | **Thiết bị(Device)** | 1d | 2019-12-10 A | 2019-12-10 A | 100% |  | Hiếu NM | 8h | 8h |
| 83 | 1.1.2.2.5.1 | DeviceKiosk | 1d | 2019-12-10 A | 2019-12-10 A | 100% | start no earlier than 2019-12-10 |  |  |  |
| 84 | 1.1.2.2.5.2 | DeviceWeb | 1d | 2019-12-10 A | 2019-12-10 A | 100% | start no earlier than 2019-12-10 |  |  |  |
| 85 | 1.1.2.2.5.3 | GroupDevice | 1d | 2019-12-10 A | 2019-12-10 A | 100% | start no earlier than 2019-12-10 |  |  |  |
| 86 | 1.1.2.2.6 | **Customer(Khách hàng)** | 1d | 2019-12-11 A | 2019-12-11 A | 100% |  | Hiếu NM | 8h | 8h |
| 87 | 1.1.2.2.6.1 | Customer(Khách hàng) | 1d | 2019-12-11 A | 2019-12-11 A | 100% | start no earlier than 2019-12-11 |  |  |  |
| 88 | 1.1.2.2.6.2 | InvitedSurvey | 1d | 2019-12-11 A | 2019-12-11 A | 100% | start no earlier than 2019-12-11 |  |  |  |
| 89 | 1.1.2.2.6.3 | RewardCode(Mã thưởng) | 1d | 2019-12-11 A | 2019-12-11 A | 100% | start no earlier than 2019-12-11 |  |  |  |
| 90 | 1.1.2.2.6.4 | RewardProgram(Chương trình khuyến mãi) | 1d | 2019-12-11 A | 2019-12-11 A | 100% | start no earlier than 2019-12-11 |  |  |  |
| 91 | 1.1.2.2.7 | **Collection(Bộ sưu tập)** | 1d | 2019-12-12 A | 2019-12-12 A | 100% |  | Hiếu NM | 8h | 8h |
| 92 | 1.1.2.2.7.1 | AppCollection | 1d | 2019-12-12 A | 2019-12-12 A | 100% | start no earlier than 2019-12-12 |  |  |  |
| 93 | 1.1.2.2.7.2 | CollectionItem | 1d | 2019-12-12 A | 2019-12-12 A | 100% | start no earlier than 2019-12-12 |  |  |  |
| 94 | 1.1.2.2.7.3 | Thank | 1d | 2019-12-12 A | 2019-12-12 A | 100% | start no earlier than 2019-12-12 |  |  |  |
| 95 | 1.1.2.2.7.4 | Theme | 1d | 2019-12-12 A | 2019-12-12 A | 100% | start no earlier than 2019-12-12 |  |  |  |
| 96 | 1.1.2.3 | **Viết tầng repository** | 3d | 2019-12-12 A | 2019-12-16 A | 100% |  | Hiếu NM; Thành LD | 128h | 128h |
| 97 | 1.1.2.3.1 | **Khảo sát(Survey)** | 1d | 2019-12-12 A | 2019-12-12 A | 100% |  | Thành LD | 8h | 8h |
| 98 | 1.1.2.3.1.1 | SurveyTotal (Khảo sát tổng) | 1d | 2019-12-12 A | 2019-12-12 A | 100% | start no earlier than 2019-12-12 |  |  |  |
| 99 | 1.1.2.3.1.2 | Survey (Khảo sát) | 1d | 2019-12-12 A | 2019-12-12 A | 100% | start no earlier than 2019-12-12 |  |  |  |
| 100 | 1.1.2.3.1.3 | Element Survey (Khảo sát thành phần) | 1d | 2019-12-12 A | 2019-12-12 A | 100% | start no earlier than 2019-12-12 |  |  |  |
| 101 | 1.1.2.3.1.4 | ContactField (Trường khảo sát) | 1d | 2019-12-12 A | 2019-12-12 A | 100% | start no earlier than 2019-12-12 |  |  |  |

| ID | WBS | Task | Duration | Start | Finish | Complete | Constraint | Resources | Work | Actual work |
| --- | --- | --- | --- | --- | --- | --- | --- | --- | --- | --- |
| 102 | 1.1.2.3.2 | **Phản hồi(Answer)** | 2d | 2019-12-13 A | 2019-12-16 A | 100% |  | Thành LD | 24h | 24h |
| 103 | 1.1.2.3.2.1 | AnswerContact | 1d | 2019-12-13 A | 2019-12-13 A | 100% | start no earlier than 2019-12-13 |  |  |  |
| 104 | 1.1.2.3.2.2 | AnswerGroupLevel | 1d | 2019-12-13 A | 2019-12-13 A | 100% | start no earlier than 2019-12-13 |  |  |  |
| 105 | 1.1.2.3.2.3 | AnswerMultiChoice | 1d | 2019-12-13 A | 2019-12-13 A | 100% | start no earlier than 2019-12-13 |  |  |  |
| 106 | 1.1.2.3.2.4 | AnswerOpen | 1d | 2019-12-14 A | 2019-12-16 A | 100% | start no earlier than 2019-12-14 |  |  |  |
| 107 | 1.1.2.3.2.5 | AnswerSingleChoice | 1d | 2019-12-14 A | 2019-12-16 A | 100% | start no earlier than 2019-12-14 |  |  |  |
| 108 | 1.1.2.3.2.6 | AnswerTotal | 1d | 2019-12-14 A | 2019-12-16 A | 100% | start no earlier than 2019-12-14 |  |  |  |
| 109 | 1.1.2.3.3 | **Phản hồi thành phần(ElementAnswer)** | 1d | 2019-12-16 A | 2019-12-16 A | 100% |  | Thành LD | 8h | 8h |
| 110 | 1.1.2.3.3.1 | ElementAnswerLevel | 1d | 2019-12-16 A | 2019-12-16 A | 100% | start no earlier than 2019-12-16 |  |  |  |
| 111 | 1.1.2.3.3.2 | ElementAnswerMultiChoice | 1d | 2019-12-16 A | 2019-12-16 A | 100% | start no earlier than 2019-12-16 |  |  |  |
| 112 | 1.1.2.3.3.3 | ElementAnswerOpen | 1d | 2019-12-16 A | 2019-12-16 A | 100% | start no earlier than 2019-12-16 |  |  |  |
| 113 | 1.1.2.3.3.4 | ElementAnswerSingleChoice | 1d | 2019-12-16 A | 2019-12-16 A | 100% | start no earlier than 2019-12-16 |  |  |  |
| 114 | 1.1.2.3.4 | **Tổ chức (Company)** | 1d | 2019-12-12 A | 2019-12-12 A | 100% |  | Hiếu NM | 8h | 8h |
| 115 | 1.1.2.3.4.1 | Company | 1d | 2019-12-12 A | 2019-12-12 A | 100% | start no earlier than 2019-12-12 |  |  |  |
| 116 | 1.1.2.3.4.2 | ObjectSurvey | 1d | 2019-12-12 A | 2019-12-12 A | 100% | start no earlier than 2019-12-12 |  |  |  |
| 117 | 1.1.2.3.4.3 | PublicNews | 1d | 2019-12-12 A | 2019-12-12 A | 100% | start no earlier than 2019-12-12 |  |  |  |
| 118 | 1.1.2.3.4.4 | User | 1d | 2019-12-12 A | 2019-12-12 A | 100% | start no earlier than 2019-12-12 |  |  |  |
| 119 | 1.1.2.3.5 | **Thiết bị(Device)** | 1d | 2019-12-13 A | 2019-12-13 A | 100% |  | Hiếu NM | 8h | 8h |
| 120 | 1.1.2.3.5.1 | DeviceKiosk | 1d | 2019-12-13 A | 2019-12-13 A | 100% | start no earlier than 2019-12-13 |  |  |  |
| 121 | 1.1.2.3.5.2 | DeviceWeb | 1d | 2019-12-13 A | 2019-12-13 A | 100% | start no earlier than 2019-12-13 |  |  |  |
| 122 | 1.1.2.3.5.3 | GroupDevice | 1d | 2019-12-13 A | 2019-12-13 A | 100% | start no earlier than 2019-12-13 |  |  |  |
| 123 | 1.1.2.3.6 | **Customer(Khách hàng)** | 1d | 2019-12-14 A | 2019-12-16 A | 100% |  | Hiếu NM | 16h | 16h |
| 124 | 1.1.2.3.6.1 | Customer(Khách hàng) | 1d | 2019-12-14 A | 2019-12-16 A | 100% | start no earlier than 2019-12-14 |  |  |  |
| 125 | 1.1.2.3.6.2 | InvitedSurvey | 1d | 2019-12-14 A | 2019-12-16 A | 100% | start no earlier than 2019-12-14 |  |  |  |
| 126 | 1.1.2.3.6.3 | RewardCode(Mã thưởng) | 1d | 2019-12-14 A | 2019-12-16 A | 100% | start no earlier than 2019-12-14 |  |  |  |
| 127 | 1.1.2.3.6.4 | RewardProgram(Chương trình khuyến mãi) | 1d | 2019-12-14 A | 2019-12-16 A | 100% | start no earlier than 2019-12-14 |  |  |  |

| ID | WBS | Task | Duration | Start | Finish | Complete | Constraint | Resources | Work | Actual work |
| --- | --- | --- | --- | --- | --- | --- | --- | --- | --- | --- |
| 128 | 1.1.2.3.7 | **Collection(Bộ sưu tập)** | 1d | 2019-12-16 A | 2019-12-16 A | 100% |  | Hiếu NM | 8h | 8h |
| 129 | 1.1.2.3.7.1 | AppCollection | 1d | 2019-12-16 A | 2019-12-16 A | 100% | start no earlier than 2019-12-16 |  |  |  |
| 130 | 1.1.2.3.7.2 | CollectionItem | 1d | 2019-12-16 A | 2019-12-16 A | 100% | start no earlier than 2019-12-16 |  |  |  |
| 131 | 1.1.2.3.7.3 | Thank | 1d | 2019-12-16 A | 2019-12-16 A | 100% | start no earlier than 2019-12-16 |  |  |  |
| 132 | 1.1.2.3.7.4 | Theme | 1d | 2019-12-16 A | 2019-12-16 A | 100% | start no earlier than 2019-12-16 |  |  |  |
| 133 | 1.1.2.4 | **Viết tầng service** | 4d | 2019-12-17 A | 2019-12-20 A | 100% |  | Hiếu NM; Thành LD | 128h | 128h |
| 134 | 1.1.2.4.1 | **Khảo sát(Survey)** | 1d | 2019-12-17 A | 2019-12-17 A | 100% |  | Thành LD | 8h | 8h |
| 135 | 1.1.2.4.1.1 | SurveyTotal (Khảo sát tổng) | 1d | 2019-12-17 A | 2019-12-17 A | 100% | start no earlier than 2019-12-17 |  |  |  |
| 136 | 1.1.2.4.1.2 | Survey (Khảo sát) | 1d | 2019-12-17 A | 2019-12-17 A | 100% | start no earlier than 2019-12-17 |  |  |  |
| 137 | 1.1.2.4.1.3 | Element Survey (Khảo sát thành phần) | 1d | 2019-12-17 A | 2019-12-17 A | 100% | start no earlier than 2019-12-17 |  |  |  |
| 138 | 1.1.2.4.1.4 | ContactField (Trường khảo sát) | 1d | 2019-12-17 A | 2019-12-17 A | 100% | start no earlier than 2019-12-17 |  |  |  |
| 139 | 1.1.2.4.2 | **Phản hồi(Answer)** | 2d | 2019-12-18 A | 2019-12-19 A | 100% |  | Thành LD | 16h | 16h |
| 140 | 1.1.2.4.2.1 | AnswerContact | 2d | 2019-12-18 A | 2019-12-19 A | 100% | start no earlier than 2019-12-18 |  |  |  |
| 141 | 1.1.2.4.2.2 | AnswerGroupLevel | 2d | 2019-12-18 A | 2019-12-19 A | 100% | start no earlier than 2019-12-18 |  |  |  |
| 142 | 1.1.2.4.2.3 | AnswerMultiChoice | 2d | 2019-12-18 A | 2019-12-19 A | 100% | start no earlier than 2019-12-18 |  |  |  |
| 143 | 1.1.2.4.2.4 | AnswerOpen | 2d | 2019-12-18 A | 2019-12-19 A | 100% | start no earlier than 2019-12-18 |  |  |  |
| 144 | 1.1.2.4.2.5 | AnswerSingleChoice | 2d | 2019-12-18 A | 2019-12-19 A | 100% | start no earlier than 2019-12-18 |  |  |  |
| 145 | 1.1.2.4.2.6 | AnswerTotal | 2d | 2019-12-18 A | 2019-12-19 A | 100% | start no earlier than 2019-12-18 |  |  |  |
| 146 | 1.1.2.4.3 | **Phản hồi thành phần(ElementAnswer)** | 1d | 2019-12-20 A | 2019-12-20 A | 100% |  | Thành LD | 8h | 8h |
| 147 | 1.1.2.4.3.1 | ElementAnswerLevel | 1d | 2019-12-20 A | 2019-12-20 A | 100% | start no earlier than 2019-12-20 |  |  |  |
| 148 | 1.1.2.4.3.2 | ElementAnswerMultiChoice | 1d | 2019-12-20 A | 2019-12-20 A | 100% | start no earlier than 2019-12-20 |  |  |  |
| 149 | 1.1.2.4.3.3 | ElementAnswerOpen | 1d | 2019-12-20 A | 2019-12-20 A | 100% | start no earlier than 2019-12-20 |  |  |  |
| 150 | 1.1.2.4.3.4 | ElementAnswerSingleChoice | 1d | 2019-12-20 A | 2019-12-20 A | 100% | start no earlier than 2019-12-20 |  |  |  |
| 151 | 1.1.2.4.4 | **Tổ chức (Company)** | 1d | 2019-12-17 A | 2019-12-17 A | 100% |  | Hiếu NM | 8h | 8h |
| 152 | 1.1.2.4.4.1 | Company | 1d | 2019-12-17 A | 2019-12-17 A | 100% | start no earlier than 2019-12-17 |  |  |  |
| 153 | 1.1.2.4.4.2 | ObjectSurvey | 1d | 2019-12-17 A | 2019-12-17 A | 100% | start no earlier than 2019-12-17 |  |  |  |
| 154 | 1.1.2.4.4.3 | PublicNews | 1d | 2019-12-17 A | 2019-12-17 A | 100% | start no earlier than 2019-12-17 |  |  |  |
| 155 | 1.1.2.4.4.4 | User | 1d | 2019-12-17 A | 2019-12-17 A | 100% | start no earlier than 2019-12-17 |  |  |  |

| ID | WBS | Task | Duration | Start | Finish | Complete | Total slack | Constraint | Resources | Work | Actual work |
| --- | --- | --- | --- | --- | --- | --- | --- | --- | --- | --- | --- |
| 156 | 1.1.2.4.5 | **Thiết bị(Device)** | 1d | 2019-12-18 A | 2019-12-18 A | 100% |  |  | Hiếu NM | 8h | 8h |
| 157 | 1.1.2.4.5.1 | DeviceKiosk | 1d | 2019-12-18 A | 2019-12-18 A | 100% |  | start no earlier than 2019-12-18 |  |  |  |
| 158 | 1.1.2.4.5.2 | DeviceWeb | 1d | 2019-12-18 A | 2019-12-18 A | 100% |  | start no earlier than 2019-12-18 |  |  |  |
| 159 | 1.1.2.4.5.3 | GroupDevice | 1d | 2019-12-18 A | 2019-12-18 A | 100% |  | start no earlier than 2019-12-18 |  |  |  |
| 160 | 1.1.2.4.6 | **Customer(Khách hàng)** | 1d | 2019-12-19 A | 2019-12-19 A | 100% |  |  | Hiếu NM | 8h | 8h |
| 161 | 1.1.2.4.6.1 | Customer(Khách hàng) | 1d | 2019-12-19 A | 2019-12-19 A | 100% |  | start no earlier than 2019-12-19 |  |  |  |
| 162 | 1.1.2.4.6.2 | InvitedSurvey | 1d | 2019-12-19 A | 2019-12-19 A | 100% |  | start no earlier than 2019-12-19 |  |  |  |
| 163 | 1.1.2.4.6.3 | RewardCode(Mã thưởng) | 1d | 2019-12-19 A | 2019-12-19 A | 100% |  | start no earlier than 2019-12-19 |  |  |  |
| 164 | 1.1.2.4.6.4 | RewardProgram(Chương trình khuyến mãi) | 1d | 2019-12-19 A | 2019-12-19 A | 100% |  | start no earlier than 2019-12-19 |  |  |  |
| 165 | 1.1.2.4.7 | **Collection(Bộ sưu tập)** | 1d | 2019-12-20 A | 2019-12-20 A | 100% |  |  | Hiếu NM | 8h | 8h |
| 166 | 1.1.2.4.7.1 | AppCollection | 1d | 2019-12-20 A | 2019-12-20 A | 100% |  | start no earlier than 2019-12-20 |  |  |  |
| 167 | 1.1.2.4.7.2 | CollectionItem | 1d | 2019-12-20 A | 2019-12-20 A | 100% |  | start no earlier than 2019-12-20 |  |  |  |
| 168 | 1.1.2.4.7.3 | Thank | 1d | 2019-12-20 A | 2019-12-20 A | 100% |  | start no earlier than 2019-12-20 |  |  |  |
| 169 | 1.1.2.4.7.4 | Theme | 1d | 2019-12-20 A | 2019-12-20 A | 100% |  | start no earlier than 2019-12-20 |  |  |  |
| 170 | 1.1.2.5 | **Viết tầng controller** | 7d | 2020-01-13 | 2020-01-21 |  | 35d |  | Hiếu NM; Huấn NT; Thành LD | 344h |  |
| 171 | 1.1.2.5.1 | Đối tượng phản hồi | 1d | 2020-01-13 | 2020-01-13 |  | 41d | start no earlier than 2020-01-13 | Huấn NT | 8h |  |
| 172 | 1.1.2.5.2 | Khảo sát | 2d | 2020-01-13 | 2020-01-14 |  | 40d | start no earlier than 2020-01-13 | Thành LD | 16h |  |
| 173 | 1.1.2.5.3 | Phản hồi | 2d | 2020-01-15 | 2020-01-16 |  | 38d | start no earlier than 2020-01-15 | Thành LD | 16h |  |
| 174 | 1.1.2.5.4 | Thống kê khảo sát | 2d | 2020-01-17 | 2020-01-20 |  | 36d | start no earlier than 2020-01-17 | Thành LD | 16h |  |
| 175 | 1.1.2.5.5 | Nhóm thiết bị | 1d | 2020-01-13 | 2020-01-13 |  | 41d | start no earlier than 2020-01-13 | Hiếu NM | 8h |  |
| 176 | 1.1.2.5.6 | Thiết bị | 2d | 2020-01-13 | 2020-01-14 |  | 40d | start no earlier than 2020-01-13 | Hiếu NM | 16h |  |
| 177 | 1.1.2.5.7 | Khách hàng | 2d | 2020-01-15 | 2020-01-16 |  | 38d | start no earlier than 2020-01-15 | Hiếu NM | 16h |  |
| 178 | 1.1.2.5.8 | Mã thưởng | 4d | 2020-01-13 | 2020-01-16 |  | 38d | start no earlier than 2020-01-13 | Huấn NT | 32h |  |
| 179 | 1.1.2.5.9 | Bộ sưu tập | 1d | 2020-01-17 | 2020-01-17 |  | 37d | start no earlier than 2020-01-17 | Hiếu NM | 8h |  |
| 180 | 1.1.2.5.10 | Theme | 1d | 2020-01-17 | 2020-01-17 |  | 37d | start no earlier than 2020-01-17 | Hiếu NM | 8h |  |
| 181 | 1.1.2.5.11 | Lời cảm ơn | 1d | 2020-01-16 | 2020-01-16 |  | 38d | start no earlier than 2020-01-16 | Huấn NT | 8h |  |
| 182 | 1.1.2.5.12 | Cấu hình | 1d | 2020-01-20 | 2020-01-20 |  | 36d | start no earlier than 2020-01-20 | Thành LD | 8h |  |
| 183 | 1.1.2.5.13 | Trang cộng đồng | 2d | 2020-01-20 | 2020-01-21 |  | 35d | start no earlier than 2020-01-18 | Hiếu NM | 16h |  |

| ID | WBS | Task | Duration | Start | Finish | Total slack | Constraint | Resources | Work |
| --- | --- | --- | --- | --- | --- | --- | --- | --- | --- |
| 184 | 1.1.2.6 | **Tạo giao diện thực** | 14d | 2020-01-31 | 2020-02-19 |  |  | Đức PT | 224h |
| 185 | 1.1.2.6.1 | Chức năng đăng nhập | 1d | 2020-01-31 | 2020-01-31 | 27d |  | Đức PT | 8h |
| 186 | 1.1.2.6.2 | Chức năng quản lý đối tượng phản hồi | 1d | 2020-01-31 | 2020-01-31 | 27d |  | Đức PT | 8h |
| 187 | 1.1.2.6.3 | Chức năng quản lý khảo sát | 1d | 2020-01-31 | 2020-01-31 | 27d |  | Đức PT | 8h |
| 188 | 1.1.2.6.4 | Quản lý phản hồi | 1d | 2020-01-31 | 2020-01-31 | 27d |  | Đức PT | 8h |
| 189 | 1.1.2.6.5 | Thống kê khảo sát | 1d | 2020-01-31 | 2020-01-31 | 27d |  | Đức PT | 8h |
| 190 | 1.1.2.6.6 | Quản lý nhóm thiết bị | 1d | 2020-01-31 | 2020-01-31 | 27d |  | Đức PT | 8h |
| 191 | 1.1.2.6.7 | Quản lý thiết bị | 1d | 2020-01-31 | 2020-01-31 | 27d |  | Đức PT | 8h |
| 192 | 1.1.2.6.8 | Quản lý khách hàng | 1d | 2020-01-31 | 2020-01-31 | 27d |  | Đức PT | 8h |
| 193 | 1.1.2.6.9 | Chương trình khuyến mãi | 1d | 2020-01-31 | 2020-01-31 | 27d |  | Đức PT | 8h |
| 194 | 1.1.2.6.10 | Quản lý bộ sưu tập | 1d | 2020-01-31 | 2020-01-31 | 27d |  | Đức PT | 8h |
| 195 | 1.1.2.6.11 | Quản lý theme | 1d | 2020-01-31 | 2020-01-31 | 27d |  | Đức PT | 8h |
| 196 | 1.1.2.6.12 | Quản lý lời cảm ơn | 1d | 2020-01-31 | 2020-01-31 | 27d |  | Đức PT | 8h |
| 197 | 1.1.2.6.13 | Cấu hình | 1d | 2020-01-31 | 2020-01-31 | 27d |  | Đức PT | 8h |
| 198 | 1.1.2.6.14 | Trang cộng đồng | 1d | 2020-01-31 | 2020-01-31 | 27d |  | Đức PT | 8h |
| 199 | 1.1.3 | Kiểm thử chức năng | 2d | 2020-02-19 | 2020-02-20 | 13d | start no earlier than 2020-02-19 |  |  |
| 200 | 1.2 | Ứng dụng kiosk | 15d? | 2020-01-31 | 2020-02-20 | 13d | finish no earlier than 2020-02-20 |  |  |
